# Projet manette

Schedule from MS Project, 2019-03-04 to 2019-07-01, 7 hours a day, A marks actual dates.
Microsoft Corporation

## Calendars

- Standard: Mon-Fri 09:00-12:00, 14:00-18:00; Sat-Sun off. Exceptions (off unless hours are given): 2019-04-15 to 2019-04-26 (Vacances de pâques).

## Schedule

| ID | WBS | Task | Type | Duration | Start | Finish | Predecessors | Complete | Remaining | Total slack | Free slack | Constraint |
| --- | --- | --- | --- | --- | --- | --- | --- | --- | --- | --- | --- | --- |
| 1 | 1 | **Analyse** |  | 10d | 2019-03-04 A | 2019-03-18 A |  | 100% |  |  |  |  |
| 2 | 1.1 | Lecture du classeur |  | 2d | 2019-03-04 A | 2019-03-05 A |  | 100% |  |  |  |  |
| 3 | 1.2 | Recherche de documentation |  | 2d | 2019-03-06 A | 2019-03-07 A |  | 100% |  |  |  |  |
| 4 | 1.3 | Choix des composants |  | 3d | 2019-03-12 A | 2019-03-14 A |  | 100% |  |  |  |  |
| 5 | 1.4 | Décision sur le module Bluetooth |  | 1d | 2019-03-07 A | 2019-03-07 A |  | 100% |  |  |  |  |
| 6 | 1.5 | Commande d'ESP32 | milestone | 0d | 2019-03-08 A | 2019-03-08 A | 5 | 100% |  |  |  |  |
| 7 | 1.6 | Rédaction du cahier des charges |  | 1d | 2019-03-15 A | 2019-03-15 A |  | 100% |  |  |  | start no earlier than 2019-03-15 |
| 8 | 1.7 | Fin de phase préprojet | milestone | 0d | 2019-03-18 A | 2019-03-18 A | 7 | 100% |  |  |  |  |
| 9 | 2 | **Mise en place de la communication** |  | 18d | 2019-03-08 A | 2019-04-03 A |  | 100% |  |  |  |  |
| 10 | 2.1 | Délai de livraison de la commande ESP32 |  | 11d | 2019-03-08 A | 2019-03-22 A | 6 | 100% |  |  |  | finish no earlier than 2019-03-22 |
| 11 | 2.2 | Test Arduino ESP32 |  | 4d | 2019-03-22 A | 2019-03-27 A | 10 | 100% |  |  |  |  |
| 12 | 2.3 | Mise en place d'un protocole définitif: RBCP |  | 3d | 2019-03-28 A | 2019-04-01 A | 11 | 100% |  |  |  |  |
| 13 | 2.4 | Protocole RBCP établi, fonctionnel | milestone | 0d | 2019-04-02 A | 2019-04-02 A | 12 | 100% |  |  |  |  |
| 14 | 2.5 | Mise en place d'une interface rudimentaire (manette breadboard) |  | 2d | 2019-04-01 A | 2019-04-02 A | 13 | 100% |  |  |  |  |
| 15 | 2.6 | Manette breadboard fonctionnelle | milestone | 0d | 2019-04-03 A | 2019-04-03 A | 14 | 100% |  |  |  |  |
| 16 | 3 | **Conception layout** |  | 36d | 2019-03-08 A | 2019-05-10 |  | 33% | 24d | 42d |  |  |
| 17 | 3.1 | Définition des élements (voir README) |  | 1d | 2019-04-02 A | 2019-04-02 A |  | 100% |  |  |  |  |
| 18 | 3.2 | Commande des élements | milestone | 0d | 2019-04-03 A | 2019-04-03 A | 17 | 100% |  |  |  |  |
| 19 | 3.3 | Délai de commande des élements |  | 5d | 2019-04-03 A | 2019-04-09 | 18 | 80% | 1d | 48d | 0d | start no earlier than 2019-04-03 |
| 20 | 3.4 | Mise en place des élements sur le PCB |  | 2d | 2019-04-10 | 2019-04-11 | 19 |  |  | 53d |  |  |
| 21 | 3.5 | Schéma électrique |  | 2d | 2019-03-08 A | 2019-03-11 A |  | 100% |  |  |  |  |
| 22 | 3.6 | Conception de PCB |  | 4d | 2019-04-08 A | 2019-04-11 | 21 | 25% | 3d | 46d | 0d | start no earlier than 2019-04-08 |
| 23 | 3.7 | PCB prêt pour commande | milestone | 0d | 2019-04-11 | 2019-04-11 | 22 |  |  | 53d |  |  |
| 24 | 3.8 | Prototypage |  | 10d | 2019-04-29 | 2019-05-10 |  |  |  | 30d | 0d | start no earlier than 2019-04-28 |

| ID | WBS | Task | Type | Duration | Start | Finish | Predecessors | Complete | Remaining | Total slack | Free slack | Constraint |
| --- | --- | --- | --- | --- | --- | --- | --- | --- | --- | --- | --- | --- |
| 25 | 4 | **Assemblage** |  | 12d | 2019-05-13 | 2019-05-28 |  |  |  | 23d |  |  |
| 26 | 4.1 | Conception Batterie |  | 2d | 2019-05-13 | 2019-05-14 | 24 |  |  | 30d | 0d |  |
| 27 | 4.2 | Commande batterie | milestone | 0d | 2019-05-14 | 2019-05-14 | 26 |  |  | 23d | 0d |  |
| 28 | 4.3 | Délai commande de batterie |  | 5d | 2019-05-15 | 2019-05-21 | 27 |  |  | 28d |  | start no earlier than 2019-05-06 |
| 29 | 4.4 | Conception du boitier |  | 10d | 2019-05-15 | 2019-05-28 | 27 |  |  | 23d | 0d |  |
| 30 | 4.5 | Manette universelle montée | milestone | 0d | 2019-05-28 | 2019-05-28 | 29 |  |  | 23d |  |  |
| 31 | 5 | **Adaptation minotaure** |  | 10d | 2019-04-29 | 2019-05-10 |  |  |  | 35d |  |  |
| 32 | 5.1 | Prog boutons NKK |  | 10d | 2019-04-29 | 2019-05-10 |  |  |  | 35d |  | start no earlier than 2019-04-29 |
| 33 | 5.2 | Modification grand boîtier |  | 2d | 2019-05-06 | 2019-05-07 |  |  |  | 37d | 0d | start no earlier than 2019-05-06 |
| 34 | 5.3 | Montage manette minotaure |  | 1d | 2019-05-08 | 2019-05-08 | 33 |  |  | 37d | 0d |  |
| 35 | 5.4 | Manette minotaure terminée | milestone | 0d | 2019-05-08 | 2019-05-08 | 34 |  |  | 37d |  |  |
| 36 | 6 | **Adaptation manette console rétro** |  | 2d | 2019-04-29 | 2019-04-30 |  |  |  | 43d |  |  |
| 37 | 6.1 | Implémentation Bluetooth et batterie dans la manette existante |  | 2d | 2019-04-29 | 2019-04-30 |  |  |  | 43d | 0d | start no earlier than 2019-04-29 |
| 38 | 6.2 | Adaptation manette console rétro terminée | milestone | 0d | 2019-04-30 | 2019-04-30 | 37 |  |  | 43d |  |  |
| 39 | 7 | **Administratif** |  | 74d | 2019-03-04 A | 2019-06-27 |  | 36% | 47.64d | 1d |  |  |
| 40 | 7.1 | Rédaction des documents techniques |  | 71d | 2019-03-04 A | 2019-06-25 |  | 37% | 45d | 1d | 0d | finish no earlier than 2019-06-25 |
| 41 | 7.2 | Rédaction du rapport final |  | 2d | 2019-06-26 | 2019-06-27 | 40 |  |  | 1d |  |  |
| 42 | 7.3 | Rédaction cahier des charges pour le projet Chevaliers et Dragon | milestone | 0d | 2019-03-14 A | 2019-03-14 A |  | 100% |  |  |  | start no earlier than 2019-03-14 |
| 43 | 7.4 | Rédaction cahier des charges pour le projet Robot MCT | milestone | 0d | 2019-04-08 | 2019-04-08 |  |  |  | 50d |  | start no earlier than 2019-04-08 |
| 44 | 7.5 | Présentation sur GitHub | milestone | 0d | 2019-03-19 A | 2019-03-19 A |  | 100% |  |  |  | start no earlier than 2019-03-19 |
| 45 | 7.6 | Revue de projet | milestone | 0d | 2019-03-28 | 2019-03-28 |  |  |  | 56d |  | finish no earlier than 2019-03-28 |
| 46 | 7.7 | Présentation projet | milestone | 0d | 2019-04-01 A | 2019-04-01 A |  | 100% |  |  |  | finish no earlier than 2019-04-01 |
| 47 | 7.8 | Bilan du projet | milestone | 0d | 2019-05-27 | 2019-05-27 |  |  |  | 25d |  | start no earlier than 2019-05-27 |
| 48 | 8 | Mini portes ouvertes publiques | milestone | 0d | 2019-07-01 | 2019-07-01 |  |  |  | 0d |  | start no earlier than 2019-07-01 |
